# Elleshop项目总体计划_1

Schedule from MS Project, 2011-09-02 to 2012-01-10, A marks actual dates.
Yehj

## Calendars

- Standard: Mon-Fri 08:00-12:00, 13:00-17:00; Sat-Sun off. Exceptions (off unless hours are given): 2011-09-11 08:00-12:00, 13:00-17:00, 2011-09-12, 2011-10-08 08:00-12:00, 13:00-17:00, 2011-10-09.

## Schedule

| ID | WBS | Task | Duration | Start | Finish | Complete | Remaining | Total slack | Free slack | Constraint |
| --- | --- | --- | --- | --- | --- | --- | --- | --- | --- | --- |
| 1 | 1 | **需求&UI设计定稿** | 11d? | 2011-09-02 A | 2011-09-16 | 56% | 4.89d? | 82d |  |  |
| 2 | 1.1 | 注册/登录需求与设计稿 | 1d | 2011-09-14 A | 2011-09-14 A | 100% |  |  |  | finish no earlier than 2011-09-13 |
| 3 | 1.2 | 我的购物袋需求与设计稿 | 1d | 2011-09-09 A | 2011-09-09 A | 100% |  |  |  | must finish on 2011-09-09 |
| 4 | 1.3 | 订单信息确认页需求与设计稿 | 1d | 2011-09-09 A | 2011-09-09 A | 100% |  |  |  | must finish on 2011-09-09 |
| 5 | 1.4 | 订单生成/支付成功页面需求与设计稿 | 1d | 2011-09-09 A | 2011-09-09 A | 100% |  |  |  | must finish on 2011-09-09 |
| 6 | 1.5 | 预售商品列表需求与设计稿 | 1d | 2011-09-13 A | 2011-09-13 A | 100% |  |  |  | must finish on 2011-09-13 |
| 7 | 1.6 | 预售商品详情页面需求与设计稿 | 1d | 2011-09-13 A | 2011-09-13 A | 100% |  |  |  | must finish on 2011-09-13 |
| 8 | 1.7 | 网站通知邮件模板设计稿 | 1d | 2011-09-14 A | 2011-09-14 A | 100% |  |  |  | must finish on 2011-09-14 |
| 9 | 1.8 | 网站首页需求与设计稿 | 1d | 2011-09-02 A | 2011-09-02 A | 100% |  |  |  | must finish on 2011-09-02 |
| 10 | 1.9 | 频道首页需求与设计稿 | 1d | 2011-09-02 A | 2011-09-02 A | 100% |  |  |  | must finish on 2011-09-02 |
| 11 | 1.10 | 品牌列表页需求与设计稿 | 1d | 2011-09-11 A | 2011-09-11 A | 100% |  |  |  | must finish on 2011-09-11 |
| 12 | 1.11 | 品牌详情页需求与设计稿 | 1d | 2011-09-11 A | 2011-09-11 A | 100% |  |  |  | must finish on 2011-09-11 |
| 13 | 1.12 | 新品速递首页需求与设计稿 | 1d | 2011-09-11 A | 2011-09-11 | 50% | 0.5d | 0d |  | must finish on 2011-09-11 |
| 14 | 1.13 | boutique首页需求与设计稿 | 1d | 2011-09-13 | 2011-09-13 |  |  | 0d |  | must finish on 2011-09-13 |
| 15 | 1.14 | 商品列表页需求与设计稿 | 1d | 2011-09-02 A | 2011-09-02 A | 100% |  |  |  | must finish on 2011-09-02 |
| 16 | 1.15 | 商品详情页需求与设计稿 | 1d | 2011-09-02 A | 2011-09-02 A | 100% |  |  |  | must finish on 2011-09-02 |
| 17 | 1.16 | 风格顾问需求与设计稿 | 1d | 2011-09-14 A | 2011-09-14 | 50% | 0.5d | 0d |  | must finish on 2011-09-14 |
| 18 | 1.17 | 我的Elleshop首页需求与设计稿 | 1d | 2011-09-15 | 2011-09-15 |  |  | 0d |  | must finish on 2011-09-15 |
| 19 | 1.18 | 我的订单需求与设计稿 | 1d | 2011-09-15 A | 2011-09-15 | 50% | 0.5d | 0d |  | must finish on 2011-09-15 |
| 20 | 1.19 | 我的订单详情需求与设计稿 | 1d | 2011-09-15 A | 2011-09-15 | 50% | 0.5d | 0d |  | must finish on 2011-09-15 |
| 21 | 1.20 | 我的收藏需求与设计稿 | 1d | 2011-09-11 | 2011-09-12 |  |  | 0d |  | must finish on 2011-09-12 |
| 22 | 1.21 | 我的设计师需求与设计稿 | 1d | 2011-09-11 | 2011-09-12 |  |  | 0d |  | must finish on 2011-09-12 |
| 23 | 1.22 | 我的优惠券需求与设计稿 | 1d? | 2011-09-16 | 2011-09-16 |  |  | 82d | 0d | start no earlier than 2011-09-16 |
| 24 | 1.23 | 账户管理需求与设计稿 | 1d | 2011-09-16 | 2011-09-16 |  |  | 0d |  | must finish on 2011-09-16 |
| 25 | 1.24 | 退换货管理需求与设计稿 | 1d? | 2011-09-16 | 2011-09-16 |  |  | 82d | 0d | start no earlier than 2011-09-16 |
| 26 | 1.25 | 帮助中心需求与设计稿 | 1d | 2011-09-16 | 2011-09-16 |  |  | 0d |  | must finish on 2011-09-16 |
| 27 | 1.26 | 网站邮件模板需求与设计稿 | 1d | 2011-09-16 | 2011-09-16 |  |  | 0d |  | must finish on 2011-09-16 |
| 28 | 1.27 | 404/敬请期待页面需求与设计稿 | 1d | 2011-09-16 | 2011-09-16 |  |  | 0d |  | must finish on 2011-09-16 |

Notes:
- 13: 新品速递首页就是商品列表页，取消该Task的UI设计稿

| ID | WBS | Task | Duration | Start | Finish | Predecessors | Complete | Remaining | Total slack | Free slack | Constraint |
| --- | --- | --- | --- | --- | --- | --- | --- | --- | --- | --- | --- |
| 30 | 2 | **第三方接口** | 11d | 2011-09-09 A | 2011-09-23 |  | 25% | 8.25d | 0d |  |  |
| 31 | 2.1 | Ucenter接口 | 1d | 2011-09-09 A | 2011-09-09 A |  | 100% |  |  |  |  |
| 32 | 2.2 | 第三方支付接口 | 1d | 2011-09-16 | 2011-09-16 |  |  |  | 0d |  | must finish on 2011-09-16 |
| 33 | 2.3 | 邮件发送接口 | 1d | 2011-09-20 | 2011-09-20 |  |  |  | 0d |  | must finish on 2011-09-20 |
| 34 | 2.4 | 我的BUY家族接口 | 1d | 2011-09-23 | 2011-09-23 |  |  |  | 0d |  | must finish on 2011-09-23 |
| 36 | 3 | **Elle资源调配** | 6d | 2011-09-23 | 2011-09-30 |  |  |  | 0d |  |  |
| 37 | 3.1 | 硬件采购 | 1d | 2011-09-23 | 2011-09-23 |  |  |  | 0d |  | must finish on 2011-09-23 |
| 38 | 3.2 | 运营支持团队筹建 | 1d | 2011-09-30 | 2011-09-30 |  |  |  | 0d |  | must finish on 2011-09-30 |
| 39 | 3.3 | 商户接口业务流程逻辑确认 | 1d | 2011-09-30 | 2011-09-30 |  |  |  | 0d |  | must finish on 2011-09-30 |
| 41 | 4 | **Mockup切图** | 14d? | 2011-09-13 A | 2011-09-30 |  | 1% | 13.8d? | 73d |  |  |
| 42 | 4.1 | 注册/登录页面切图（HTML） | 2d | 2011-09-15 | 2011-09-16 | 2 |  |  | 54d | 0d | start no earlier than 2011-09-14 |
| 43 | 4.2 | 我的购物袋页面切图（HTML） | 3d | 2011-09-13 | 2011-09-15 | 3 |  |  | 69d | 0d | start no earlier than 2011-09-13 |
| 44 | 4.3 | 订单信息确认页切图(HTML) | 4d | 2011-09-13 | 2011-09-16 | 4 |  |  | 43d | 0d | start no earlier than 2011-09-13 |
| 45 | 4.4 | 订单生成/支付成功页面切图(HTML) | 3d | 2011-09-13 | 2011-09-15 | 5 |  |  | 54d | 1d | start no earlier than 2011-09-13 |
| 46 | 4.5 | 预售商品列表页面切图（HTML） | 2d | 2011-09-14 | 2011-09-15 | 6 |  |  | 70d | 0d |  |
| 47 | 4.6 | 预售商品详情页面切图(HTML) | 2d | 2011-09-14 | 2011-09-15 | 7 |  |  | 69d | 0d |  |
| 48 | 4.7 | 网站通知邮件模板切图(HTML) | 1d | 2011-09-16 | 2011-09-16 | 8 |  |  | 71d | 0d | start no earlier than 2011-09-16 |
| 49 | 4.8 | 网站首页切图(HTML) | 2d | 2011-09-19 A | 2011-09-20 | 9 | 50% | 1d | 59d | 3d | start no earlier than 2011-09-08 |
| 50 | 4.9 | 频道首页切图(HTML) | 1d | 2011-09-19 | 2011-09-19 | 10 |  |  | 60d | 4d | start no earlier than 2011-09-19 |
| 51 | 4.10 | 商品列表页切图(HTML) | 7d | 2011-09-19 | 2011-09-27 | 15 |  |  | 39d | 0d | start no earlier than 2011-09-19 |
| 52 | 4.11 | 商品详情页切图(HTML) | 7d | 2011-09-19 | 2011-09-27 | 16 |  |  | 44d | 0d | start no earlier than 2011-09-19 |
| 53 | 4.12 | 品牌列表页切图(HTML) | 2d | 2011-09-21 | 2011-09-22 | 11 |  |  | 53d | 11d | start no earlier than 2011-09-21 |
| 54 | 4.13 | 品牌详情页切图(HTML) | 2d | 2011-09-21 | 2011-09-22 | 12 |  |  | 53d | 11d | start no earlier than 2011-09-21 |
| 55 | 4.14 | 新品速递首页切图(HTML) | 1d? | 2011-09-20 | 2011-09-20 | 13 |  |  | 57d | 13d | start no earlier than 2011-09-20 |
| 56 | 4.15 | boutiques首页切图(HTML) | 2d | 2011-09-21 | 2011-09-22 | 14 |  |  | 55d | 11d | start no earlier than 2011-09-21 |
| 57 | 4.16 | 风格顾问切图（HTML） | 9d | 2011-09-15 | 2011-09-27 | 17 |  |  | 39d | 0d | start no earlier than 2011-09-15 |
| 58 | 4.17 | 我的Elleshop首页切图(HTML) | 1d | 2011-09-23 | 2011-09-23 | 18 |  |  | 58d | 15d | start no earlier than 2011-09-23 |
| 59 | 4.18 | 我的订单切图(HTML) | 2d | 2011-09-26 | 2011-09-27 | 19 |  |  | 54d | 14d | start no earlier than 2011-09-26 |
| 60 | 4.19 | 我的订单详情切图(HTML) | 3d | 2011-09-23 | 2011-09-27 | 20 |  |  | 54d | 14d | start no earlier than 2011-09-23 |
| 61 | 4.20 | 我的收藏切图(HTML) | 2d | 2011-09-28 | 2011-09-29 | 21 |  |  | 52d | 12d | start no earlier than 2011-09-28 |
| 62 | 4.21 | 我的设计师切图(HTML) | 2d | 2011-09-28 | 2011-09-29 | 22 |  |  | 52d | 12d | start no earlier than 2011-09-28 |
| 63 | 4.22 | 帐户管理切图(HTML) | 3d | 2011-09-28 | 2011-09-30 | 24 |  |  | 53d | 16d | start no earlier than 2011-09-28 |
| 64 | 4.23 | 帮助中心切图(HTML) | 3d | 2011-09-28 | 2011-09-30 | 26 |  |  | 73d |  | start no earlier than 2011-09-28 |
| 65 | 4.24 | 网站邮件模板切图(HTML) | 1d | 2011-09-30 | 2011-09-30 | 27 |  |  | 53d | 16d | start no earlier than 2011-09-30 |
| 66 | 4.25 | 404/敬请期待页面切图(HTML) | 1d | 2011-09-30 | 2011-09-30 | 28 |  |  | 73d |  | start no earlier than 2011-09-30 |
| 67 | 4.26 | 我的优惠券切图(HTML) | 1d? | 2011-09-19 | 2011-09-19 | 23 |  |  | 82d |  |  |
| 68 | 4.27 | 退换货管理切图(HTML) | 1d? | 2011-09-19 | 2011-09-19 | 25 |  |  | 82d |  |  |

Notes:
- 55: 可能可以复用商品列表页
- 67: 二期功能，可延后处理
- 68: 二期功能，可延后处理

| ID | WBS | Task | Duration | Start | Finish | Predecessors | Total slack | Free slack | Constraint |
| --- | --- | --- | --- | --- | --- | --- | --- | --- | --- |
| 70 | 5 | **编程开发** | 56d | 2011-09-19 | 2011-12-02 |  | 17d |  |  |
| 71 | 5.1 | **十月中版本** | 10d | 2011-09-19 | 2011-09-30 |  | 43d | 0d |  |
| 72 | 5.1.1 | 注册/登录页面开发 | 7d | 2011-09-19 | 2011-09-27 | 42, 31 | 54d | 8d |  |
| 73 | 5.1.2 | 我的购物袋页面开发 | 5d | 2011-09-19 | 2011-09-23 | 43 | 68d |  | start no earlier than 2011-09-19 |
| 74 | 5.1.3 | 订单信息确认页开发 | 8d | 2011-09-19 | 2011-09-28 | 44 | 43d | 7d |  |
| 75 | 5.1.4 | 订单生成/支付成功页面开发 | 8d | 2011-09-19 | 2011-09-28 | 32, 45 | 53d | 7d |  |
| 76 | 5.1.5 | 预售商品列表页面开发 | 8d | 2011-09-19 | 2011-09-28 | 46 | 65d |  | finish no earlier than 2011-09-28 |
| 77 | 5.1.6 | 预售商品详情页面开发 | 8d | 2011-09-19 | 2011-09-28 | 47 | 65d |  | finish no earlier than 2011-09-28 |
| 78 | 5.1.7 | 订单生成通知邮件开发 | 2d | 2011-09-26 | 2011-09-27 | 48 | 66d |  | start no earlier than 2011-09-26 |
| 79 | 5.1.8 | 邮件发送服务开发 | 3d | 2011-09-19 | 2011-09-21 |  | 60d | 23d | start no earlier than 2011-09-19 |
| 80 | 5.1.9 | 预售商品信息维护(SellerPortal&IPP) | 8d | 2011-09-19 | 2011-09-28 |  | 65d |  | start no earlier than 2011-09-19 |
| 81 | 5.1.10 | 预售商品库存维护(SellerPortal&IPP) | 8d | 2011-09-19 | 2011-09-28 |  | 65d |  | start no earlier than 2011-09-19 |
| 82 | 5.1.11 | 预售订单处理流程调整（IPP) | 5d | 2011-09-19 | 2011-09-23 |  | 68d |  | finish no earlier than 2011-09-23 |
| 83 | 5.1.12 | 预售订单到货更新计算逻辑(IPP) | 5d | 2011-09-26 | 2011-09-30 |  | 63d |  | start no earlier than 2011-09-26 |
| 84 | 5.1.13 | 财务模块预售订金信息记录（IPP) | 5d | 2011-09-19 | 2011-09-23 |  | 68d |  | start no earlier than 2011-09-19 |
| 85 | 5.1.14 | 开发环境联合测试 | 5d | 2011-09-26 | 2011-09-30 |  | 63d |  | start no earlier than 2011-09-26 |
| 87 | 5.2 | **十月底版本** | 26d | 2011-09-26 | 2011-10-28 |  | 35d | 0d |  |
| 88 | 5.2.1 | 注册/登录页面改进 | 5d | 2011-10-08 | 2011-10-13 | 72, 31 | 46d |  | start no earlier than 2011-10-08 |
| 89 | 5.2.2 | 订单信息确认页改进 | 15d | 2011-10-08 | 2011-10-27 | 74 | 36d |  | start no earlier than 2011-10-08 |
| 90 | 5.2.3 | 订单生成/支付成功页面改进 | 5d | 2011-10-08 | 2011-10-13 | 32, 75 | 46d |  | start no earlier than 2011-10-08 |
| 91 | 5.2.4 | 网站首页开发 | 5d | 2011-09-26 | 2011-09-30 | 49 | 56d |  | start no earlier than 2011-09-26 |
| 92 | 5.2.5 | 频道首页开发 | 5d | 2011-09-26 | 2011-09-30 | 50 | 56d |  | start no earlier than 2011-09-26 |
| 93 | 5.2.6 | 品牌列表页开发 | 9d | 2011-10-08 | 2011-10-19 | 53 | 42d |  | start no earlier than 2011-10-08 |
| 94 | 5.2.7 | 品牌详情页开发 | 9d | 2011-10-08 | 2011-10-19 | 54 | 42d |  | start no earlier than 2011-10-08 |
| 95 | 5.2.8 | 新品速递首页开发 | 7d | 2011-10-08 | 2011-10-17 | 55 | 44d |  | start no earlier than 2011-10-08 |
| 96 | 5.2.9 | boutiques首页开发 | 7d | 2011-10-08 | 2011-10-17 | 56 | 44d |  | start no earlier than 2011-10-08 |
| 97 | 5.2.10 | 商品列表页开发 | 20d | 2011-09-28 | 2011-10-24 | 51 | 39d |  | start no earlier than 2011-09-26 |
| 98 | 5.2.11 | 商品详情页开发 | 15d | 2011-09-28 | 2011-10-17 | 52, 34 | 44d |  | start no earlier than 2011-09-26 |
| 99 | 5.2.12 | 风格顾问页面开发 | 20d | 2011-09-28 | 2011-10-24 | 57 | 39d |  | start no earlier than 2011-09-26 |
| 100 | 5.2.13 | 我的ElleShop首页开发 | 3d | 2011-10-14 | 2011-10-18 | 58 | 43d |  | start no earlier than 2011-10-14 |
| 101 | 5.2.14 | 我的订单列表页开发 | 5d | 2011-10-17 | 2011-10-21 | 59 | 40d |  | start no earlier than 2011-10-17 |
| 102 | 5.2.15 | 我的订单详情页开发 | 5d | 2011-10-17 | 2011-10-21 | 60 | 40d |  | start no earlier than 2011-10-17 |
| 103 | 5.2.16 | 我的收藏开发 | 5d | 2011-10-17 | 2011-10-21 | 61 | 40d |  | start no earlier than 2011-10-17 |
| 104 | 5.2.17 | 我的设计师开发 | 5d | 2011-10-17 | 2011-10-21 | 62 | 40d |  | start no earlier than 2011-10-17 |
| 105 | 5.2.18 | 个人信息页开发 | 2d | 2011-10-24 | 2011-10-25 | 63 | 38d |  | start no earlier than 2011-10-24 |
| 106 | 5.2.19 | 安全设置开发 | 3d | 2011-10-24 | 2011-10-26 | 63 | 37d |  | start no earlier than 2011-10-24 |
| 107 | 5.2.20 | 消息通知列表页开发 | 2d | 2011-10-24 | 2011-10-25 | 63 | 38d |  | start no earlier than 2011-10-24 |
| 108 | 5.2.21 | 邮件订阅开发 | 2d | 2011-10-24 | 2011-10-25 | 63 | 38d |  | start no earlier than 2011-10-24 |
| 109 | 5.2.22 | 通知邮件开发 | 3d | 2011-10-24 | 2011-10-26 | 65, 79 | 37d |  | start no earlier than 2011-10-24 |
| 110 | 5.2.23 | IPP控制面板功能改进 | 3d | 2011-09-26 | 2011-09-28 |  | 58d |  | start no earlier than 2011-09-26 |
| 111 | 5.2.24 | IPP顾客管理功能改进 | 5d | 2011-09-26 | 2011-09-30 | 31 | 56d |  | start no earlier than 2011-09-26 |
| 112 | 5.2.25 | IPP商品管理功能改进 | 25d | 2011-09-26 | 2011-10-27 |  | 36d |  | start no earlier than 2011-09-26 |
| 113 | 5.2.26 | IPP销售管理功能改进 | 20d | 2011-09-26 | 2011-10-20 |  | 41d |  | start no earlier than 2011-09-26 |
| 114 | 5.2.27 | IPP库存管理功能改进 | 5d | 2011-09-26 | 2011-09-30 |  | 56d |  | start no earlier than 2011-09-26 |
| 115 | 5.2.28 | IPP市场活动/内容管理功能改进 | 10d | 2011-10-08 | 2011-10-20 |  | 41d |  | start no earlier than 2011-10-08 |
| 116 | 5.2.29 | IPP商家管理功能改进 | 15d | 2011-10-08 | 2011-10-27 |  | 36d |  | start no earlier than 2011-10-08 |
| 117 | 5.2.30 | SellerPortal商品管理功能改进 | 15d | 2011-10-10 | 2011-10-28 |  | 35d |  | start no earlier than 2011-10-10 |
| 118 | 5.2.31 | SellerPortal订单管理功能改进 | 10d | 2011-10-10 | 2011-10-21 |  | 40d |  | start no earlier than 2011-10-10 |
| 119 | 5.2.32 | SellerPortal销售管理功能改进 | 5d | 2011-10-10 | 2011-10-14 |  | 45d |  | start no earlier than 2011-10-10 |
| 120 | 5.2.33 | SellerPortal店铺管理功能改进 | 5d | 2011-10-10 | 2011-10-14 |  | 45d |  | start no earlier than 2011-10-10 |
| 121 | 5.2.34 | 第三方接口开发 | 10d | 2011-10-17 | 2011-10-28 |  | 35d |  | start no earlier than 2011-10-17 |

Notes:
- 73: 十月中版本取消购物袋

| ID | WBS | Task | Type | Duration | Start | Finish | Predecessors | Total slack | Free slack | Constraint |
| --- | --- | --- | --- | --- | --- | --- | --- | --- | --- | --- |
| 124 | 5.3 | **二期版本** |  | 20d | 2011-11-07 | 2011-12-02 |  | 10d |  |  |
| 125 | 5.3.1 | 商品列表/商品详情页面改进（促销） |  | 5d | 2011-11-07 | 2011-11-11 |  | 25d |  | start no earlier than 2011-11-07 |
| 126 | 5.3.2 | 订单信息确认页（促销）改进 |  | 5d | 2011-11-07 | 2011-11-11 |  | 25d |  | start no earlier than 2011-11-07 |
| 127 | 5.3.3 | 分享绑定设置开发 |  | 2d | 2011-11-07 | 2011-11-08 |  | 28d |  | start no earlier than 2011-11-07 |
| 128 | 5.3.4 | 我的优惠券 |  | 5d | 2011-11-07 | 2011-11-11 |  | 25d |  | start no earlier than 2011-11-07 |
| 129 | 5.3.5 | 退换货管理 |  | 7d | 2011-11-07 | 2011-11-15 |  | 23d |  | start no earlier than 2011-11-07 |
| 130 | 5.3.6 | IPP市场活动（促销）功能改进 |  | 15d | 2011-11-07 | 2011-11-25 |  | 15d |  | start no earlier than 2011-11-07 |
| 131 | 5.3.7 | IPP退换货管理 |  | 20d | 2011-11-07 | 2011-12-02 |  | 10d |  | start no earlier than 2011-11-07 |
| 132 | 5.3.8 | 第三方接口（促销）功能改进 |  | 20d | 2011-11-07 | 2011-12-02 |  | 10d |  | start no earlier than 2011-11-07 |
| 134 | 6 | **集成测试** |  | 63d | 2011-10-03 | 2011-12-27 |  | 7d |  |  |
| 135 | 6.1 | 十月中版本ST测试 | milestone | 7d | 2011-10-03 | 2011-10-10 | 71 | 63d | 0d |  |
| 137 | 6.2 | 十月底版本ST测试 | milestone | 7d | 2011-10-31 | 2011-11-08 | 87 | 35d | 0d | start no earlier than 2011-10-26 |
| 139 | 6.3 | 二期版本ST测试 | milestone | 7d | 2011-12-19 | 2011-12-27 | 124 | 0d |  | start no earlier than 2011-12-19 |
| 141 | 7 | **发布部署** |  | 78d | 2011-09-26 | 2012-01-10 |  | 0d |  |  |
| 142 | 7.1 | 服务器部署 |  | 3d | 2011-09-26 | 2011-09-28 | 37 | 72d | 9d |  |
| 143 | 7.2 | 前期版本UAT部署 | milestone | 3d | 2011-10-11 | 2011-10-13 | 135, 142 | 63d |  |  |
| 144 | 7.3 | 十月底版本UAT部署 | milestone | 3d | 2011-11-09 | 2011-11-11 | 137 | 35d | 0d |  |
| 145 | 7.4 | 十月底上线功能培训 |  | 7d | 2011-11-14 | 2011-11-22 | 38, 144 | 35d |  |  |
| 146 | 7.5 | 二期版本UAT部署 | milestone | 3d | 2011-12-28 | 2011-12-30 | 139 | 0d |  |  |
| 147 | 7.6 | 二期上线功能培训 |  | 7d | 2012-01-02 | 2012-01-10 | 146 | 0d |  |  |
